# HLS Development

Schedule from ProjectLibre, 2021-01-01 to 2021-04-06.

## Calendars

- Пятидневка: Mon-Fri 08:00-12:00, 13:00-17:00; Sat-Sun off.

## Resources

| Resource | Rate |
| --- | --- |
| Не назначено |  |
| Алексей Д. | 1500 |
| Павел Д. | 1400 |

## Schedule

| ID | WBS | Task | Duration | Start | Finish | Predecessors | Resources |
| --- | --- | --- | --- | --- | --- | --- | --- |
| 1 | 1 | **Этап 1. Создание проекта/Авторизация/Чат** | 11d? | 2021-01-01 | 2021-01-15 |  |  |
| 2 | 1.1 | **Backend** | 1d? | 2021-01-01 | 2021-01-01 |  |  |
| 3 | 1.1.1 | Инфраструктура Heroku | 0.25d? | 2021-01-01 | 2021-01-01 |  |  |
| 4 | 1.1.2 | Инициализация приложения | 0.5d? | 2021-01-01 | 2021-01-01 |  |  |
| 5 | 1.1.3 | Авторизация и регистрация | 1d? | 2021-01-01 | 2021-01-01 |  |  |
| 13 | 1.2 | **Frontend** | 11d? | 2021-01-01 | 2021-01-15 |  |  |
| 14 | 1.2.1 | Создание и настройка проекта | 1d? | 2021-01-01 | 2021-01-01 |  |  |
| 15 | 1.2.2 | Навигация | 1d? | 2021-01-04 | 2021-01-04 | 14 |  |
| 16 | 1.2.3 | Верстка базовых компонентов | 1d? | 2021-01-05 | 2021-01-05 | 15 |  |
| 17 | 1.2.4 | Слайдер приветствие | 1d? | 2021-01-06 | 2021-01-06 | 16 |  |
| 18 | 1.2.5 | Авторизация | 1d? | 2021-01-07 | 2021-01-07 | 17 |  |
| 19 | 1.2.6 | Подтверждение кода | 1d? | 2021-01-08 | 2021-01-08 | 18 |  |
| 20 | 1.2.7 | Движок чата | 1d? | 2021-01-11 | 2021-01-11 | 19 |  |
| 21 | 1.2.8 | Опрос приветствие | 1d? | 2021-01-12 | 2021-01-12 | 20 |  |
| 22 | 1.2.9 | Опрос по питанию | 1d? | 2021-01-13 | 2021-01-13 | 21 |  |
| 23 | 1.2.10 | Опрос по образу жизни | 1d? | 2021-01-14 | 2021-01-14 | 22 |  |
| 24 | 1.2.11 | Опрос по состоянию здоровья | 1d? | 2021-01-15 | 2021-01-15 | 23 |  |
| 26 | 2 | **Этап 2. Каталог продуктов** | 8.25d? | 2021-01-18 | 2021-01-28 | 1 |  |
| 27 | 2.1 | Список категорий | 1.12d? | 2021-01-18 | 2021-01-19 |  | Алексей Д. |
| 28 | 2.2 | Список подкатегорий | 1.12d? | 2021-01-19 | 2021-01-20 | 27 | Алексей Д. |
| 29 | 2.3 | Отображение продукта | 2.25d? | 2021-01-20 | 2021-01-22 | 28 | Алексей Д. |
| 30 | 2.4 | Дашбоард (верстка) | 1.5d? | 2021-01-22 | 2021-01-25 | 29 | Алексей Д. |
| 31 | 2.5 | Фильтрация каталога | 1.12d? | 2021-01-26 | 2021-01-27 | 30 | Алексей Д. |
| 32 | 2.6 | Поиск по каталогу | 1.12d? | 2021-01-27 | 2021-01-28 | 31 | Алексей Д. |

| ID | WBS | Task | Duration | Start | Finish | Predecessors | Resources |
| --- | --- | --- | --- | --- | --- | --- | --- |
| 34 | 3 | **Этап 3. Дашборд/профиль** | 7d? | 2021-01-28 | 2021-02-08 | 26 |  |
| 35 | 3.1 | Дашбоард (подсадка) | 1d? | 2021-01-28 | 2021-01-29 |  | Алексей Д. |
| 36 | 3.2 | **Компонент просмотра конента (каталог знаний)** | 3d? | 2021-01-29 | 2021-02-03 | 35 |  |
| 37 | 3.2.1 | Список статей | 0.75d? | 2021-01-29 | 2021-01-29 |  | Алексей Д. |
| 38 | 3.2.2 | Компонент типа новость | 0.75d? | 2021-02-01 | 2021-02-01 | 37 | Алексей Д. |
| 39 | 3.2.3 | Компонент типа сторис (упрощен объект) | 0.75d? | 2021-02-01 | 2021-02-02 | 38 | Алексей Д. |
| 40 | 3.2.4 | Компонент типа видео | 0.75d? | 2021-02-02 | 2021-02-03 | 39 | Алексей Д. |
| 41 | 3.3 | **Результаты анкетирования/профиль** | 3d? | 2021-02-03 | 2021-02-08 | 36 |  |
| 42 | 3.3.1 | Верстка/подсадка | 0.75d? | 2021-02-03 | 2021-02-03 |  | Алексей Д. |
| 43 | 3.3.2 | Макроцикл | 0.75d? | 2021-02-04 | 2021-02-04 | 42 | Алексей Д. |
| 44 | 3.3.3 | Мезоцикл | 0.75d? | 2021-02-04 | 2021-02-05 | 43 | Алексей Д. |
| 45 | 3.3.4 | Редактирование профиля | 0.75d? | 2021-02-05 | 2021-02-08 | 44 | Алексей Д. |
| 47 | 4 | **Этап 4. Режим дня/Движение** | 9.38d? | 2021-02-08 | 2021-02-19 | 34 |  |
| 48 | 4.1 | Режим дня (ночь) | 1.5d? | 2021-02-08 | 2021-02-09 |  | Алексей Д. |
| 49 | 4.2 | Режим дня (день) | 2.25d? | 2021-02-09 | 2021-02-11 | 48 | Алексей Д. |
| 50 | 4.3 | Добавить данные (отметьте тренировку на часах) | 0.75d? | 2021-02-12 | 2021-02-12 | 49 | Алексей Д. |
| 51 | 4.4 | Добавить тренировку поиск | 0.75d? | 2021-02-12 | 2021-02-15 | 50 | Алексей Д. |
| 52 | 4.5 | Добавить тренировку (каталог) | 1.12d? | 2021-02-15 | 2021-02-16 | 51 | Алексей Д. |
| 53 | 4.6 | Резутаты после добавления | 0.75d? | 2021-02-16 | 2021-02-17 | 52 | Алексей Д. |
| 54 | 4.7 | Каталог тренировок таб | 0.75d? | 2021-02-17 | 2021-02-18 | 53 | Алексей Д. |
| 55 | 4.8 | Просмотр тренировки | 1.5d? | 2021-02-18 | 2021-02-19 | 54 | Алексей Д. |
| 57 | 5 | **Этап 5. Движение 2** | 10.12d? | 2021-02-19 | 2021-03-05 | 47 |  |
| 58 | 5.1 | Начать тренировку | 1.5d? | 2021-02-19 | 2021-02-23 |  | Алексей Д. |
| 59 | 5.2 | Пульсовый график | 0.75d? | 2021-02-23 | 2021-02-23 | 58 | Алексей Д. |
| 60 | 5.3 | Пульс по зонам интенсивности (считывание пульса) | 1.12d? | 2021-02-23 | 2021-02-24 | 59 | Алексей Д. |
| 61 | 5.4 | Экран групп мышц | 1.5d? | 2021-02-25 | 2021-02-26 | 60 | Алексей Д. |
| 62 | 5.5 | Apple Health/Google Fit (health) | 1.5d? | 2021-02-26 | 2021-03-01 | 61 | Алексей Д. |
| 63 | 5.6 | Интеграция с кардиомониторами | 1.5d? | 2021-03-02 | 2021-03-03 | 62 | Алексей Д. |
| 64 | 5.7 | Уведомления Push | 2.25d? | 2021-03-03 | 2021-03-05 | 63 | Алексей Д. |

| ID | WBS | Task | Duration | Start | Finish | Predecessors | Resources |
| --- | --- | --- | --- | --- | --- | --- | --- |
| 66 | 6 | **Этап 6. Полезные инструменты/Каталог знаний** | 4.12d? | 2021-03-05 | 2021-03-11 | 57 |  |
| 67 | 6.1 | Полезные инструменты | 0.75d? | 2021-03-05 | 2021-03-08 |  | Алексей Д. |
| 68 | 6.2 | Умный будильник | 0.75d? | 2021-03-08 | 2021-03-09 | 67 | Алексей Д. |
| 69 | 6.3 | Курение | 1.12d? | 2021-03-09 | 2021-03-10 | 68 | Алексей Д. |
| 70 | 6.4 | Локальные напоминания | 0d? | 2021-03-10 | 2021-03-10 | 69 | Алексей Д. |
| 71 | 6.5 | Список уведомлений | 0.75d? | 2021-03-10 | 2021-03-11 | 70 | Алексей Д. |
| 72 | 6.6 | Список статей по категориям таб | 0.75d? | 2021-03-11 | 2021-03-11 | 71 | Алексей Д. |
| 74 | 7 | **Этап 7. Функционал профиля/Питание** | 9.75d? | 2021-03-11 | 2021-03-25 | 66 |  |
| 75 | 7.1 | Компонент секций со шкалами и пороговыми значениями (нутриенты продукта) | 0.75d? | 2021-03-11 | 2021-03-12 |  | Алексей Д. |
| 76 | 7.2 | Прием пищи карточка | 0.75d? | 2021-03-12 | 2021-03-15 | 75 | Алексей Д. |
| 77 | 7.3 | Прием пищи добавление | 1.12d? | 2021-03-15 | 2021-03-16 | 76 | Алексей Д. |
| 78 | 7.4 | Результаты тестирования | 1.5d? | 2021-03-16 | 2021-03-17 | 77 | Алексей Д. |
| 79 | 7.5 | Настройки | 1.5d? | 2021-03-18 | 2021-03-19 | 78 | Алексей Д. |
| 80 | 7.6 | Мои замеры, просмотр прогресса ИМТ, стептеста | 2.25d? | 2021-03-19 | 2021-03-23 | 79 | Алексей Д. |
| 81 | 7.7 | Вызов повторного тестирования 1 раз в 2 месяца | 0.38d? | 2021-03-23 | 2021-03-24 | 80 | Алексей Д. |
| 82 | 7.8 | Компонент календаря | 1.5d? | 2021-03-24 | 2021-03-25 | 81 | Алексей Д. |
| 84 | 8 | **Этап 8. Статистика (Банк здоровья)** | 7.88d | 2021-03-25 | 2021-04-06 | 74 |  |
| 85 | 8.1 | Компонент выбора периода или даты для статистики | 0.75d | 2021-03-25 | 2021-03-26 |  | Алексей Д. |
| 86 | 8.2 | Радиальная шкала недосыпа (вместо трех разных) | 0.75d | 2021-03-26 | 2021-03-29 | 85 | Алексей Д. |
| 87 | 8.3 | Радиальная шкала общая | 0.75d | 2021-03-29 | 2021-03-29 | 86 | Алексей Д. |
| 88 | 8.4 | Экран статистики с таб навигацией 13 | 0.75d | 2021-03-29 | 2021-03-30 | 87 | Алексей Д. |
| 89 | 8.5 | Таб статистика сон (-радиальная шкала) | 0.75d | 2021-03-30 | 2021-03-31 | 88 | Алексей Д. |
| 90 | 8.6 | Таб статистика питание (-радиальная шкала, -горизонтальные шкалы, +употребление воды) | 1.12d | 2021-03-31 | 2021-04-01 | 89 | Алексей Д. |
| 91 | 8.7 | Таб статистика активность (-радиальная шкала) | 0.75d | 2021-04-01 | 2021-04-02 | 90 | Алексей Д. |
| 92 | 8.8 | Статистика сон период (-календарь, сон за неделю/достаточность сна за неделю) | 0.75d | 2021-04-02 | 2021-04-02 | 91 | Алексей Д. |
| 93 | 8.9 | Статистика питание период (-календарь) | 0.75d | 2021-04-05 | 2021-04-05 | 92 | Алексей Д. |
| 94 | 8.10 | Статистика активность период (-календарь) | 0.75d | 2021-04-05 | 2021-04-06 | 93 | Алексей Д. |
